# SI OPS

How a schedule from GanttProject changed from version to version. A marks actual dates.

## Version 1 (saved 2023-11-28)

Note of the change: premier commit

| ID | WBS | Task | Duration | Start | Finish |
| --- | --- | --- | --- | --- | --- |
| 1 | 1 | **Analyse** | 16d | 2023-12-01 | 2023-12-22 |
| 2 |  | Récupérer code et BDD des deux applications | 6d | 2023-12-01 | 2023-12-08 |
| 3 |  | Validation par le pôle projets | 10d | 2023-12-11 | 2023-12-22 |
| 4 |  | Validation du workflow et vision claire de l'IHM | 16d | 2023-12-01 | 2023-12-22 |
| 5 | 2 | **Infrastructure** | 40d | 2023-12-04 | 2024-01-30 |
| 6 |  | Rédaction DEB et EBS | 10d | 2023-12-04 | 2023-12-15 |
| 7 |  | Création environnement qualif STIG | 19d | 2023-12-04 | 2023-12-29 |
| 8 |  | Création environnement prod STIG | 30d | 2023-12-18 | 2024-01-30 |
| 9 |  | SIRD créer demande d'interface référentiels | 38d | 2023-12-04 | 2024-01-26 |
| 10 | 4 | **Développement** | 74d | 2023-12-08 | 2024-03-22 |
| 11 |  | DEV LOT 1 Création de la demande | 34d | 2023-12-08 | 2024-01-26 |
| 12 |  | Livraison lot 1 | 0d | 2024-01-29 | 2024-01-29 |
| 13 |  | Recette et correctifs lot 1 | 15d | 2024-01-29 | 2024-02-16 |
| 14 |  | DEV LOT 2 Workflow des demandes et notifications | 42d | 2024-01-02 | 2024-02-28 |
| 15 |  | Livraison lot 2 | 0d | 2024-02-29 | 2024-02-29 |
| 16 |  | Recette et correctifs lot 2 | 17d | 2024-02-29 | 2024-03-22 |
| 17 | 5 | **SSO** | 61d | 2023-12-05 | 2024-02-29 |
| 18 |  | SSO determination de la liste de codes unités utilisatrices | 9d | 2023-12-05 | 2023-12-15 |
| 19 |  | SSO Préparation par le BCOF d'un modèle pour le SSO basé sur la liste des codes unités utilisatrices | 9d | 2023-12-18 | 2023-12-29 |
| 20 |  | SSO Raccordement SSO QUAL | 20d | 2024-01-02 | 2024-01-29 |
| 21 |  | SSO Raccordement SSO PROD | 24d | 2024-01-29 | 2024-02-29 |
| 22 |  | VABF | 9d | 2024-03-25 | 2024-04-05 |
| 23 |  | Installation en production | 0d | 2024-04-03 | 2024-04-03 |
| 24 |  | VSR | 9d | 2024-04-03 | 2024-04-15 |
| 25 |  | Mise en production V1 | 0d | 2024-04-16 | 2024-04-16 |
| 26 |  | Analyse et DEV Lot 3 Statistiques | 18d | 2024-05-02 | 2024-05-30 |

## Version 2 (saved 2023-11-28)

Note of the change: 2eme modif

Last finish stays 2024-05-30.

Changed:

| ID | Task | Start | Finish | Duration |
| --- | --- | --- | --- | --- |
| 6 | Rédaction DEB et EBS |  | 2023-12-15 → 2023-12-29 (+14d) | 10d → 19d |
| 9 | SIRD créer demande d'interface référentiels | 2023-12-04 → 2023-12-11 (+7d) | 2024-01-26 → 2023-12-29 (-28d) | 38d → 14d |

## Version 3 (saved 2023-11-28)

Note of the change: mise e jour

Last finish 2024-05-30 → 2024-04-16 (-44d).

Added:

| ID | Task | Duration | Start | Finish |
| --- | --- | --- | --- | --- |
| 11 | DEV LOT 1 création modèle de données | 16d | 2023-12-01 | 2023-12-22 |
| 13 | DEV LOT 1 Escalade de la demande | 19d | 2024-01-02 | 2024-01-26 |
| 16 | DEV LOT 2 Délégation de la demande | 28d | 2024-01-22 | 2024-02-28 |
| 17 | DEV LOT 2 Arbitrage | 18d | 2024-02-05 | 2024-02-28 |
| 18 | DEV LOT 2 Notification Neo | 18d | 2024-02-05 | 2024-02-28 |

Removed: 14 DEV LOT 2 Workflow des demandes et notifications; 26 Analyse et DEV Lot 3 Statistiques

Changed:

| ID | Task | Start | Finish | Duration | Other |
| --- | --- | --- | --- | --- | --- |
| 2 | Récupérer référentiels des deux applications existante |  |  |  | was named Récupérer code et BDD des deux applications |
| 5 | **Infrastructure** |  | 2024-01-30 → 2024-02-05 (+6d) |  |  |
| 6 | Rédaction DEB et EBS |  | 2023-12-29 → 2024-01-05 (+7d) |  |  |
| 7 | Création environnement qualif STIG |  | 2023-12-29 → 2024-01-05 (+7d) |  |  |
| 8 | Création environnement prod STIG |  | 2024-01-30 → 2024-02-05 (+6d) |  |  |
| 9 | SIRD créer demande d'interface référentiels |  | 2023-12-29 → 2024-01-05 (+7d) |  |  |
| 10 | **Développement** | 2023-12-08 → 2023-12-01 (-7d) |  | 74d → 75d |  |
| 12 | DEV LOT 1 Création de la demande | 2023-12-08 → 2023-12-11 (+3d) | 2024-01-26 → 2024-01-12 (-14d) | 34d → 19d |  |
| 14 | Livraison lot 1 (Qualif) |  |  |  | was named Livraison lot 1 |
| 21 | **SSO** |  |  | 61d → 57d |  |
| 23 | SSO Préparation par le BCOF d'un modèle pour le SSO basé sur la liste des codes unités utilisatrices |  | 2023-12-29 → 2024-01-05 (+7d) |  |  |

## Version 4 (saved 2023-11-28)

Note of the change: modif

Last finish stays 2024-04-16.

Changed:

| ID | Task | Other |
| --- | --- | --- |
| 3 | Validation par le Pôle Projets | was named Validation par le pôle projets |
